Schedule from Planner, 2015-07-06 to 2015-08-19.

## Calendars

- Default: Mon-Fri 08:00-12:00, 13:00-17:00; Sat-Sun off.

## Resources

| Resource |
| --- |
| Diego |
| Quentin |
| Microcircuitos |
| 3D-hub Medellin |

## Schedule

| ID | WBS | Task | Type | Duration | Start | Finish | Predecessors | Constraint | Resources | Work |
| --- | --- | --- | --- | --- | --- | --- | --- | --- | --- | --- |
| 1 | 1 | **Stabilized power stage** |  |  | 2015-07-06 | 2015-07-17 |  |  |  | 80h |
| 2 | 1.1 | Assemble circuit |  |  | 2015-07-06 | 2015-07-10 |  |  | Diego | 40h |
| 3 | 1.2 | Test Power circuit |  |  | 2015-07-13 | 2015-07-17 | 2 |  | Diego | 40h |
| 4 | 1.3 | Functionnal power stage | milestone | 0d | 2015-07-17 | 2015-07-17 | 3 |  |  |  |
| 5 | 2 | **Piezo Driver** |  |  | 2015-07-13 | 2015-07-31 |  |  |  | 120h |
| 6 | 2.1 | Design SMD circuit |  |  | 2015-07-13 | 2015-07-17 |  | must start on 2015-07-13 | Diego | 40h |
| 7 | 2.2 | PCB production |  |  | 2015-07-20 | 2015-07-24 | 6 | must start on 2015-07-20 | Microcircuitos | 40h |
| 8 | 2.3 | Test Driving stage |  |  | 2015-07-27 | 2015-07-31 | 7 | must start on 2015-07-27 | Diego | 40h |
| 9 | 2.4 | Functionnal Piezo | milestone | 0d | 2015-07-31 | 2015-07-31 | 8 |  |  |  |
| 10 | 3 | **Sensor stage** |  |  | 2015-07-13 | 2015-07-31 |  |  |  | 160h |
| 11 | 3.1 | Test ZTP module with IR source |  |  | 2015-07-20 | 2015-07-24 |  | must start on 2015-07-20 | Diego | 40h |
| 12 | 3.2 | Design circuit for murata sensors |  |  | 2015-07-13 | 2015-07-17 |  | must start on 2015-07-13 | Quentin | 40h |
| 13 | 3.3 | PCB production |  |  | 2015-07-20 | 2015-07-24 | 12 |  | Microcircuitos | 40h |
| 14 | 3.4 | Test Murata sensor |  |  | 2015-07-27 | 2015-07-31 | 13 |  | Diego | 40h |
| 15 | 3.5 | Functionnal sensor stage | milestone | 0d | 2015-07-31 | 2015-07-31 | 11, 14 |  |  |  |
| 16 | 4 | **Optical stage** |  |  | 2015-07-06 | 2015-07-31 |  |  |  | 160h |
| 17 | 4.1 | CAD design |  |  | 2015-07-06 | 2015-07-10 |  |  | Quentin | 40h |
| 18 | 4.2 | 3D printing |  |  | 2015-07-13 | 2015-07-24 | 17 |  | 3D-hub Medellin | 80h |
| 19 | 4.3 | Device Assembly |  |  | 2015-07-27 | 2015-07-31 | 18 |  | Quentin | 40h |
| 20 | 4.4 | Complete optical bench | milestone | 0d | 2015-07-31 | 2015-07-31 | 19 |  |  |  |
| 21 | 5 | **Spectrometer** |  |  | 2015-08-03 | 2015-08-19 | 8, 14, 19 |  |  | 200h |
| 22 | 5.1 | Device Assebly |  |  | 2015-08-03 | 2015-08-05 |  |  | Diego; Quentin | 40h |
| 23 | 5.2 | Programming |  |  | 2015-08-05 | 2015-08-12 | 22 |  | Diego; Quentin | 80h |
| 24 | 5.3 | Exhaustive testing |  |  | 2015-08-12 | 2015-08-19 | 23 |  | Diego; Quentin | 80h |
| 25 | 5.4 | Complete device | milestone | 0d | 2015-08-19 | 2015-08-19 | 24 |  |  |  |

Notes:
- 2: A stabilized 100V source is to be / functionnal at the end of the period
- 6: Must get an Eagle file with Gerbers by / July 17th to send to production
